# Kinesic

Schedule from MS Project, 2018-06-24 to 2019-01-30, A marks actual dates.
Timeline
Kinesic GmbH

## Calendars

- Standard: Mon-Sun 08:00-12:00, 13:00-17:00.

## Resources

| Resource |
| --- |
| Diego |
| Jorge |
| Lalo |
| Gabo |
| Eduardo |
| Matthias |
| All |
| 199 |
| 200 |

## Schedule

| ID | WBS | Task | Type | Duration | Start | Finish | Predecessors | Complete | Remaining | Total slack | Resources | Work | Actual work |
| --- | --- | --- | --- | --- | --- | --- | --- | --- | --- | --- | --- | --- | --- |
| 1 | 1 | **Kinesic: Phase 1** |  | 202d | 2018-06-24 A | 2019-01-11 |  | 62% | 75.94d | 0d | All | 52534h | 26373h |
| 2 | 1.1 | **Milestones** |  | 168d | 2018-06-24 A | 2018-12-09 |  |  | 168d | 0d | All | 1344h |  |
| 3 | 1.1.1 | Phase 1 Kick-off | milestone, manual | 0d | 2018-06-24 A | 2018-06-24 A |  | 100% |  |  | All |  |  |
| 4 | 1.1.2 | Delivery 1 | milestone, manual | 0d | 2018-09-02 A | 2018-09-02 A |  | 100% |  |  | All |  |  |
| 5 | 1.1.3 | Delivery 2 | milestone, manual | 0d | 2018-10-08 | 2018-10-08 |  |  |  |  | All |  |  |
| 6 | 1.1.4 | Delivery 3 | milestone, manual | 0d | 2018-11-11 | 2018-11-11 |  |  |  |  | All |  |  |
| 7 | 1.1.5 | Phase 1 Kick-out | milestone, manual | 0d | 2018-12-09 | 2018-12-09 |  |  |  |  | All |  |  |
| 8 | 1.2 | **Project planing** |  | 57d | 2018-06-24 A | 2018-08-19 A |  | 100% |  |  | Eduardo | 5816h | 5816h |
| 9 | 1.2.1 | **Project Management** |  | 57d | 2018-06-24 A | 2018-08-19 A |  | 100% |  |  | Eduardo | 1776h | 1776h |
| 10 | 1.2.1.1 | Define project management tool | manual | 9d | 2018-07-28 A | 2018-08-05 A |  | 100% |  |  | All | 72h | 72h |
| 11 | 1.2.1.2 | Set project deadlines | manual | 43d | 2018-06-24 A | 2018-08-05 A |  | 100% |  |  | All | 344h | 344h |
| 12 | 1.2.1.3 | Describe project tasks | manual | 36d | 2018-06-24 A | 2018-07-29 A |  | 100% |  |  | All | 288h | 288h |
| 13 | 1.2.1.4 | Create project timeline in Excel | manual | 7d | 2018-07-23 A | 2018-07-29 A | 10, 11, 12 | 100% |  |  | Eduardo | 56h | 56h |
| 14 | 1.2.1.5 | Integrate project tasks in PM tool | manual | 14d | 2018-07-30 A | 2018-08-12 A | 13 | 100% |  |  | Eduardo; Jorge | 224h | 224h |
| 15 | 1.2.1.6 | Create project timeline in PM tool | manual | 21d | 2018-07-30 A | 2018-08-19 A | 14 | 100% |  |  | Eduardo; Jorge | 336h | 336h |
| 16 | 1.2.2 | **Finance** |  | 43d | 2018-06-24 A | 2018-08-05 A |  | 100% |  |  | All | 712h | 712h |
| 17 | 1.2.2.1 | Agree on available budget for phase 1 | manual | 1d | 2018-06-24 A | 2018-06-24 A |  | 100% |  |  | All | 8h | 8h |
| 18 | 1.2.2.2 | Identify options to make money transfer | manual | 16d | 2018-06-30 A | 2018-07-15 A |  | 100% |  |  | Diego | 128h | 128h |
| 19 | 1.2.2.3 | Decide on money transfer method | manual | 1d | 2018-07-16 A | 2018-07-16 A | 18 | 100% |  |  | All | 8h | 8h |
| 20 | 1.2.2.4 | Transfer initial part of budget | manual | 6d | 2018-07-17 A | 2018-07-22 A | 19 | 100% |  |  | Eduardo | 48h | 48h |
| 21 | 1.2.2.5 | Create accounting list | manual | 22d | 2018-07-15 A | 2018-08-05 A |  | 100% |  |  | Diego | 176h | 176h |
| 22 | 1.2.3 | **State of the Art** |  | 50d | 2018-06-24 A | 2018-08-12 A |  | 100% |  |  | Eduardo; Jorge | 2184h | 2184h |
| 23 | 1.2.3.1 | Identify main competitors | manual | 50d | 2018-06-24 A | 2018-08-12 A |  | 100% |  |  | Eduardo; Jorge | 800h | 800h |
| 24 | 1.2.3.2 | Create company profile of main competitors | manual | 15d | 2018-07-29 A | 2018-08-12 A |  | 100% |  |  | Eduardo; Jorge | 240h | 240h |
| 25 | 1.2.3.3 | Research on MCUs or platforms for prototyping | manual | 43d | 2018-06-24 A | 2018-08-05 A |  | 100% |  |  | Gabo | 344h | 344h |

| ID | WBS | Task | Type | Duration | Start | Finish | Predecessors | Complete | Remaining | Total slack | Resources | Work | Actual work |
| --- | --- | --- | --- | --- | --- | --- | --- | --- | --- | --- | --- | --- | --- |
| 26 | 1.2.4 | **Electronic Components** |  | 36d | 2018-07-15 A | 2018-08-19 A |  | 100% |  |  | Lalo | 688h | 688h |
| 27 | 1.2.4.1 | Create list of components necessary to start | manual | 22d | 2018-07-15 A | 2018-08-05 A |  | 100% |  |  | All | 176h | 176h |
| 28 | 1.2.4.2 | Clarify which components are available at Tec | manual | 7d | 2018-08-06 A | 2018-08-12 A | 27 | 100% |  |  | All | 56h | 56h |
| 29 | 1.2.4.3 | Buy missing components | manual | 7d | 2018-08-13 A | 2018-08-19 A | 28 | 100% |  |  | All | 56h | 56h |
| 30 | 1.2.4.4 | Define tool for electronic design | manual | 14d | 2018-07-30 A | 2018-08-12 A |  | 100% |  |  | Lalo | 112h | 112h |
| 31 | 1.3 | **Analog electronics** |  | 126d | 2018-08-06 A | 2018-12-09 |  | 85% | 18.79d | 0d | Lalo | 7848h | 5257.56h |
| 32 | 1.3.1 | **ECG** |  | 75d | 2018-08-06 A | 2018-10-19 |  | 95% | 3.58d | 0d | Lalo | 2672h | 2128h |
| 33 | 1.3.1.1 | **Preamplification** |  | 45d | 2018-08-06 A | 2018-09-19 A |  | 100% |  |  |  | 616h | 616h |
| 34 | 1.3.1.1.1 | Identify gain ranges for pre-amplification | manual | 14d | 2018-08-06 A | 2018-08-19 A |  | 100% |  |  | Lalo | 112h | 112h |
| 35 | 1.3.1.1.2 | Define instrumental amplifier to be used | manual | 7d | 2018-08-06 A | 2018-08-12 A | 34 | 100% |  |  | Lalo | 56h | 56h |
| 36 | 1.3.1.1.3 | Calculate needed ranges of digital potentiometers | manual | 14d | 2018-08-06 A | 2018-08-19 A | 35 | 100% |  |  | Lalo | 112h | 112h |
| 37 | 1.3.1.1.4 | Identify and buy digital potentiomet. and InsAmp. | manual | 14d | 2018-08-06 A | 2018-08-19 A | 36 | 100% |  |  | Lalo | 112h | 112h |
| 38 | 1.3.1.1.5 | Build preamplification circuit in protoboard | manual | 14d | 2018-08-06 A | 2018-08-19 A | 37 | 100% |  |  | Lalo | 112h | 112h |
| 39 | 1.3.1.1.6 | Test preamplification circuit | manual | 7d | 2018-09-13 A | 2018-09-19 A | 38 | 100% |  |  | Lalo | 56h | 56h |
| 40 | 1.3.1.1.7 | Define final potentiomet. and InsAmp. to be used | manual | 7d | 2018-09-13 A | 2018-09-19 A | 39 | 100% |  |  | Lalo | 56h | 56h |
| 41 | 1.3.1.2 | **Multiplexer** |  | 30d | 2018-09-01 A | 2018-09-30 A |  | 100% |  |  |  | 592h | 592h |
| 42 | 1.3.1.2.1 | Research types of analog multiplexers | manual | 13d | 2018-09-01 A | 2018-09-13 A |  | 100% |  |  | Lalo | 104h | 104h |
| 43 | 1.3.1.2.2 | Identify and order 3 analog multiplexers | manual | 13d | 2018-09-03 A | 2018-09-15 A | 42 | 100% |  |  | Lalo | 104h | 104h |
| 44 | 1.3.1.2.3 | Receive multiplexer | manual | 13d | 2018-09-05 A | 2018-09-17 A | 43 | 100% |  |  | Lalo | 104h | 104h |
| 45 | 1.3.1.2.4 | Build multiplexer + preamplification in protoboard | manual | 15d | 2018-09-08 A | 2018-09-22 A | 44 | 100% |  |  | Lalo | 120h | 120h |
| 46 | 1.3.1.2.5 | Test signal quality with multiplexer | manual | 6d | 2018-09-18 A | 2018-09-23 A | 45 | 100% |  |  | Lalo | 48h | 48h |
| 47 | 1.3.1.2.6 | Verify maximum signal frequency with multiplexer | manual | 6d | 2018-09-18 A | 2018-09-23 A | 46 | 100% |  |  | Lalo | 48h | 48h |
| 48 | 1.3.1.2.7 | Define multiplexer to be used | manual | 8d | 2018-09-23 A | 2018-09-30 A | 47 | 100% |  |  | Lalo | 64h | 64h |
| 49 | 1.3.1.3 | **Filters** |  | 44d | 2018-08-13 A | 2018-09-25 A |  | 100% |  |  |  | 504h | 504h |
| 50 | 1.3.1.3.1 | Identify frequency ranges for biosignals | manual | 14d | 2018-08-13 A | 2018-08-26 A |  | 100% |  |  | Lalo | 112h | 112h |
| 51 | 1.3.1.3.2 | Design cut-band filter at 60Hz | manual | 14d | 2018-08-13 A | 2018-08-26 A | 50 | 100% |  |  | Lalo | 112h | 112h |
| 52 | 1.3.1.3.3 | Identify and buy digital pot. for all frequency ranges | manual | 14d | 2018-08-20 A | 2018-09-02 A | 51 | 100% |  |  | Lalo | 112h | 112h |
| 53 | 1.3.1.3.4 | Build filter + multiplexer + preamp. in protoboard | manual | 15d | 2018-09-08 A | 2018-09-22 A | 52 | 100% |  |  | Lalo | 120h | 120h |
| 54 | 1.3.1.3.5 | Test filters | manual | 4d | 2018-09-22 A | 2018-09-25 A | 53 | 100% |  |  | Lalo | 32h | 32h |
| 55 | 1.3.1.3.6 | Define components for filter circuit | manual | 2d | 2018-09-24 A | 2018-09-25 A | 54 | 100% |  |  | Lalo | 16h | 16h |

Notes:
- 30: 16/09/2018: Eagle
- 35: 12/08/2018: AD620

| ID | WBS | Task | Type | Duration | Start | Finish | Predecessors | Complete | Resources | Work | Actual work |
| --- | --- | --- | --- | --- | --- | --- | --- | --- | --- | --- | --- |
| 56 | 1.3.1.4 | **Final Amplification** |  | 21d | 2018-09-10 A | 2018-09-30 A |  | 100% |  | 360h | 360h |
| 57 | 1.3.1.4.1 | Identify gain ranges for final amplification | manual | 7d | 2018-09-10 A | 2018-09-16 A |  | 100% | Lalo | 56h | 56h |
| 58 | 1.3.1.4.2 | Calculate needed ranges of digital potentiometers | manual | 7d | 2018-09-10 A | 2018-09-16 A | 57 | 100% | Lalo | 56h | 56h |
| 59 | 1.3.1.4.3 | Identify and buy digital potentiometers | manual | 10d | 2018-09-10 A | 2018-09-19 A | 58 | 100% | Lalo | 80h | 80h |
| 60 | 1.3.1.4.4 | Build amp+filter+multiplexer+preamp in protoboard | manual | 7d | 2018-09-24 A | 2018-09-30 A | 59 | 100% | Lalo | 56h | 56h |
| 61 | 1.3.1.4.5 | Test amplification circuit | manual | 7d | 2018-09-24 A | 2018-09-30 A | 60 | 100% | Lalo | 56h | 56h |
| 62 | 1.3.1.4.6 | Define digital potentiometers to be used | manual | 7d | 2018-09-24 A | 2018-09-30 A | 61 | 100% | Lalo | 56h | 56h |
| 63 | 1.3.1.5 | Test DI, DII, DIII simultaneously | manual | 13d | 2018-10-07 | 2018-10-19 |  |  |  |  |  |
| 64 | 1.3.2 | **General purpose channels** |  | 70d | 2018-08-06 A | 2018-10-14 A |  | 100% | Lalo | 2528h | 2528h |
| 65 | 1.3.2.1 | **Preamplification** |  | 42d | 2018-08-06 A | 2018-09-16 A |  | 100% |  | 592h | 592h |
| 66 | 1.3.2.1.1 | Identify gain ranges for pre-amplification | manual | 14d | 2018-08-06 A | 2018-08-19 A |  | 100% | Lalo | 112h | 112h |
| 67 | 1.3.2.1.2 | Define instrumental amplifier to be used 12/08/2018: AD620 | manual | 7d | 2018-08-06 A | 2018-08-12 A | 66 | 100% | Lalo | 56h | 56h |
| 68 | 1.3.2.1.3 | Calculate needed ranges of digital potentiometers | manual | 14d | 2018-08-06 A | 2018-08-19 A | 67 | 100% | Lalo | 112h | 112h |
| 69 | 1.3.2.1.4 | Identify and buy digital potentiomet. and InsAmp. | manual | 14d | 2018-08-06 A | 2018-08-19 A | 68 | 100% | Lalo | 112h | 112h |
| 70 | 1.3.2.1.5 | Build preamplification circuit in protoboard | manual | 14d | 2018-08-06 A | 2018-08-19 A | 69 | 100% | Lalo | 112h | 112h |
| 71 | 1.3.2.1.6 | Test preamplification circuit | manual | 8d | 2018-09-08 A | 2018-09-15 A | 70 | 100% | Lalo | 64h | 64h |
| 72 | 1.3.2.1.7 | Define final potentiomet. and InsAmp. to be used | manual | 3d | 2018-09-14 A | 2018-09-16 A | 71 | 100% | Lalo | 24h | 24h |
| 73 | 1.3.2.2 | **Filters** |  | 56d | 2018-08-13 A | 2018-10-07 A |  | 100% |  | 808h | 808h |
| 74 | 1.3.2.2.1 | Identify frequency ranges for biosignals | manual | 14d | 2018-08-13 A | 2018-08-26 A |  | 100% | Lalo | 112h | 112h |
| 75 | 1.3.2.2.2 | Calculate ranges of digital pot. for low-pass filters | milestone, manual | 0d | 2018-09-12 A | 2018-09-12 A | 74 | 100% | Lalo |  |  |
| 76 | 1.3.2.2.3 | Calculate ranges of digital pot. for high-pass filters | manual | 14d | 2018-08-13 A | 2018-08-26 A | 75 | 100% | Lalo | 112h | 112h |
| 77 | 1.3.2.2.4 | Design cut-band filter at 60Hz | manual | 14d | 2018-08-13 A | 2018-08-26 A | 45 | 100% | Lalo | 112h | 112h |
| 78 | 1.3.2.2.5 | Identify and buy digital pot. for all frequency ranges | manual | 19d | 2018-08-28 A | 2018-09-15 A | 46 | 100% | Lalo | 152h | 152h |
| 79 | 1.3.2.2.6 | Build filter + multiplexer + preamp. in protoboard | manual | 20d | 2018-09-16 A | 2018-10-05 A | 47 | 100% | Lalo | 160h | 160h |
| 80 | 1.3.2.2.7 | Test filters with different frequency ranges | manual | 17d | 2018-09-20 A | 2018-10-06 A | 48 | 100% | Lalo | 136h | 136h |
| 81 | 1.3.2.2.8 | Define components for filter circuit | manual | 3d | 2018-10-05 A | 2018-10-07 A | 49 | 100% | Lalo | 24h | 24h |

| ID | WBS | Task | Type | Duration | Start | Finish | Predecessors | Complete | Remaining | Total slack | Resources | Work | Actual work |
| --- | --- | --- | --- | --- | --- | --- | --- | --- | --- | --- | --- | --- | --- |
| 82 | 1.3.2.3 | **Final Amplification** |  | 35d | 2018-09-10 A | 2018-10-14 A |  | 100% |  |  |  | 568h | 568h |
| 83 | 1.3.2.3.1 | Identify gain ranges for final amplification | manual | 7d | 2018-09-10 A | 2018-09-16 A |  | 100% |  |  | Lalo | 56h | 56h |
| 84 | 1.3.2.3.2 | Calculate needed ranges of digital potentiometers | manual | 7d | 2018-09-10 A | 2018-09-16 A | 83 | 100% |  |  | Lalo | 56h | 56h |
| 85 | 1.3.2.3.3 | Identify and buy digital potentiometers | manual | 14d | 2018-09-10 A | 2018-09-23 A | 84 | 100% |  |  | Lalo | 112h | 112h |
| 86 | 1.3.2.3.4 | Build amp+filter+multiplexer+preamp in protoboard | manual | 9d | 2018-09-24 A | 2018-10-02 A | 85 | 100% |  |  | Lalo | 72h | 72h |
| 87 | 1.3.2.3.5 | Test amplification circuit | manual | 21d | 2018-09-24 A | 2018-10-14 A | 86 | 100% |  |  | Lalo | 168h | 168h |
| 88 | 1.3.2.3.6 | Define digital potentiometers to be used | manual | 13d | 2018-09-24 A | 2018-10-06 A | 87 | 100% |  |  | Lalo | 104h | 104h |
| 89 | 1.3.3 | **PCB Analog Electronic** |  | 81d | 2018-09-20 A | 2018-12-09 | 30, 32, 64 | 33% | 54.05d | 0d | Lalo | 1640h | 545.57h |
| 90 | 1.3.3.1 | Design PCB Layout | manual | 7d | 2018-10-08 A | 2018-10-14 | 32, 64 | 25% | 5.25d |  | Lalo | 56h | 14h |
| 91 | 1.3.3.2 | Create electronic/PCB layout | manual | 9d | 2018-10-20 A | 2018-10-28 | 90 | 25% | 6.75d |  | Lalo | 72h | 18h |
| 92 | 1.3.3.3 | Contact 5 suppliers to manufacture prototype | manual | 31d | 2018-09-20 A | 2018-10-20 | 90, 91 | 75% | 7.75d |  | Lalo | 248h | 186h |
| 93 | 1.3.3.4 | Receive 3 RFQs | manual | 28d | 2018-10-01 A | 2018-10-28 | 92 | 50% | 14d |  | Lalo | 224h | 112h |
| 94 | 1.3.3.5 | Perform PO | manual | 28d | 2018-10-22 | 2018-11-18 | 93 |  |  |  | Lalo | 224h |  |
| 95 | 1.3.3.6 | Receive PCB prototype | manual | 7d | 2018-11-19 | 2018-11-25 | 94 |  |  |  | Lalo | 56h |  |
| 96 | 1.3.3.7 | Validate prototype | manual | 14d | 2018-11-26 | 2018-12-09 | 95 |  |  |  | Lalo | 112h |  |
| 97 | 1.4 | **Digital electronics** |  | 133d | 2018-07-30 A | 2018-12-09 |  | 41% | 77.99d | 0d | Gabo | 6638h | 2492h |
| 98 | 1.4.1 | **Microcontroller Requirements** |  | 21d | 2018-07-30 A | 2018-08-19 A | 89 | 100% |  |  | Gabo | 720h | 720h |
| 99 | 1.4.1.1 | Define inputs needed for signal acquisition | manual | 14d | 2018-08-06 A | 2018-08-19 A | 89FF | 100% |  |  | Gabo; Lalo | 220h | 220h |
| 100 | 1.4.1.2 | Define outputs needed for digital potentiometers | manual | 14d | 2018-08-06 A | 2018-08-19 A | 89FF | 100% |  |  | Gabo; Lalo | 220h | 220h |
| 101 | 1.4.1.3 | Decide on communication protocol - MCU & Mobile | manual | 14d | 2018-07-30 A | 2018-08-12 A |  | 100% |  |  | All | 112h | 112h |
| 102 | 1.4.2 | **Programming Signal Acquisition** |  | 37.25d | 2018-08-06 A | 2018-09-12 A | 98 | 100% |  |  | Gabo | 654h | 654h |
| 103 | 1.4.2.1 | Program signal acquisition in MCU | manual | 6d | 2018-09-06 A | 2018-09-12 A | 98FF | 100% |  |  | Gabo | 48h | 48h |
| 104 | 1.4.2.2 | Design and implement signal validation tool | manual | 13d | 2018-08-06 A | 2018-08-19 A |  | 100% |  |  | Gabo | 104h | 104h |
| 105 | 1.4.2.3 | Test signal acquisition by using standard signals | manual | 6d | 2018-08-13 A | 2018-08-19 A | 104FF | 100% |  |  | Gabo | 48h | 48h |
| 106 | 1.4.2.4 | Program signal acquisition using multiplexer | manual | 13d | 2018-08-13 A | 2018-08-26 A | 105FF | 100% |  |  | Gabo | 104h | 104h |
| 107 | 1.4.2.5 | Test signal acquisition by using standard signals | manual | 6.75d | 2018-08-27 A | 2018-09-02 A | 106FF | 100% |  |  | Gabo | 54h | 54h |

Notes:
- 92: 1) Gollet Electronics: approx. 20,000.00 MXN (diseno y fabricación). / 2) HepPro: 4,500.00 MXN diseno y fabricación al final (?) -> 10 PCBs / 3) Tec: ? / 4) ? / 10,000.00 - 12,000.00 MXN por diseno y fabricación
- 101: 12/08/2018: Bluetooth, since WiFi will be used from the phone to the cloud database.

| ID | WBS | Task | Type | Duration | Start | Finish | Predecessors | Complete | Remaining | Total slack | Resources | Work | Actual work |
| --- | --- | --- | --- | --- | --- | --- | --- | --- | --- | --- | --- | --- | --- |
| 108 | 1.4.3 | **Programming Analog Electronic Configuration** |  | 98d | 2018-09-03 A | 2018-12-09 | 32, 64, 89, 102 | 50% | 49d | 0d | Gabo | 1206h | 603h |
| 109 | 1.4.3.1 | Set base config. for acquisition of standard signals | manual | 27d | 2018-09-03 A | 2018-09-30 | 102FF | 50% | 13.5d |  | Gabo | 216h | 108h |
| 110 | 1.4.3.2 | Test base configuration by using standard signals | manual | 6d | 2018-10-01 A | 2018-10-07 | 109FF | 50% | 3d |  | Gabo | 48h | 24h |
| 111 | 1.4.3.3 | Test base config. with electronic from protoboard | manual | 6d | 2018-10-01 A | 2018-10-07 | 32FF, 64FF | 50% | 3d |  | Gabo | 48h | 24h |
| 112 | 1.4.3.4 | Test base config. with PCB analog electronic | manual | 13.75d | 2018-11-26 A | 2018-12-09 | 89FF | 50% | 6.88d |  | Gabo | 110h | 55h |
| 113 | 1.4.4 | **Communication MCU - Mobile** |  | 63d | 2018-08-06 A | 2018-10-07 | 32, 64 | 50% | 31.5d | 0d | Gabo | 1030h | 515h |
| 114 | 1.4.4.1 | Identify and order communication module | manual | 13d | 2018-08-06 A | 2018-08-19 |  | 50% | 6.5d |  | Gabo | 104h | 52h |
| 115 | 1.4.4.2 | Program communication between MCU & Mobile | manual | 20d | 2018-08-13 A | 2018-09-02 | 114FF | 50% | 10d |  | Gabo | 160h | 80h |
| 116 | 1.4.4.3 | Test communication by sending dummy sequences | manual | 13d | 2018-09-03 A | 2018-09-16 | 115FF | 50% | 6.5d |  | Gabo | 104h | 52h |
| 117 | 1.4.4.4 | Test communication by sending known signal | manual | 13d | 2018-09-03 A | 2018-09-16 | 115FF | 50% | 6.5d |  | Gabo | 104h | 52h |
| 118 | 1.4.4.5 | Test communication by sending biosignals | manual | 6.75d | 2018-10-01 A | 2018-10-07 | 32FF, 64FF | 50% | 3.38d |  | Gabo | 54h | 27h |
| 119 | 1.4.5 | **PCB Final Hardware** |  | 98d | 2018-09-03 | 2018-12-09 | 113, 108, 102, 98 |  |  | 0d | Gabo | 1966h |  |
| 120 | 1.4.5.1 | Select MCU that covers requirements | manual | 13d | 2018-09-03 | 2018-09-16 | 113FF, 108FF, 102FF, 98FF |  |  |  | Gabo | 104h |  |
| 121 | 1.4.5.2 | Design PCB layout with analog electronics | manual | 34d | 2018-09-10 | 2018-10-14 | 113FF, 108FF, 102FF, 98FF |  |  |  | Gabo | 272h |  |
| 122 | 1.4.5.3 | Contact 5 suppliers to manufacture prototype | manual | 27d | 2018-09-03 | 2018-09-30 | 121FF |  |  |  | Gabo | 216h |  |
| 123 | 1.4.5.4 | Receive 3 RFQs | manual | 27d | 2018-10-01 | 2018-10-28 | 122FF |  |  |  | Gabo | 216h |  |
| 124 | 1.4.5.5 | Perform PO | manual | 27d | 2018-10-22 | 2018-11-18 | 123 |  |  |  | Gabo | 216h |  |
| 125 | 1.4.5.6 | Receive PCB prototype | manual | 7d | 2018-11-19 | 2018-11-26 | 124 |  |  |  | Gabo | 56h |  |
| 126 | 1.4.5.7 | Validate prototype | manual | 12.75d | 2018-11-27 | 2018-12-09 | 125 |  |  |  | Gabo | 102h |  |
| 127 | 1.5 | **Cloud application** |  | 164d | 2018-08-01 A | 2019-01-11 |  | 47% | 86.38d | 0d | Diego; Jorge | 29272h | 12807.5h |
| 128 | 1.5.1 | **Design Application Layout** |  | 33d | 2018-08-01 A | 2018-09-02 A |  | 100% |  |  | Diego; Jorge | 4124h | 4124h |
| 129 | 1.5.1.1 | Create interface for display data | manual | 32d | 2018-08-01 A | 2018-09-02 A |  | 100% |  |  | Diego; Jorge | 512h | 512h |
| 130 | 1.5.1.2 | Main Menu Layout | manual | 32d | 2018-08-01 A | 2018-09-02 A |  | 100% |  |  | Diego; Jorge | 512h | 512h |
| 131 | 1.5.1.3 | Authentification Layout | manual | 32d | 2018-08-01 A | 2018-09-02 A |  | 100% |  |  | Diego; Jorge | 512h | 512h |
| 132 | 1.5.1.4 | Biosignal Display Layout | manual | 32d | 2018-08-01 A | 2018-09-02 A |  | 100% |  |  | Diego; Jorge | 512h | 512h |
| 133 | 1.5.1.5 | MCU Display Layout | manual | 32d | 2018-08-01 A | 2018-09-02 A |  | 100% |  |  | Diego; Jorge | 512h | 512h |
| 134 | 1.5.1.6 | Patient/User Info Display Layout | manual | 32d | 2018-08-01 A | 2018-09-02 A |  | 100% |  |  | Diego; Jorge | 512h | 512h |
| 135 | 1.5.1.7 | Storage/Cloud Access Display Layout | manual | 32.75d | 2018-08-01 A | 2018-09-02 A |  | 100% |  |  | Diego; Jorge | 524h | 524h |

| ID | WBS | Task | Type | Duration | Start | Finish | Predecessors | Complete | Remaining | Total slack | Resources | Work | Actual work |
| --- | --- | --- | --- | --- | --- | --- | --- | --- | --- | --- | --- | --- | --- |
| 136 | 1.5.2 | **Software Configuration** |  | 117d | 2018-08-01 A | 2018-11-25 |  | 63% | 42.85d | 0d | Diego; Jorge | 11020h | 6984.47h |
| 137 | 1.5.2.1 | Choose programming language | manual | 39d | 2018-08-01 A | 2018-09-09 A |  | 100% |  |  | Diego; Jorge | 624h | 624h |
| 138 | 1.5.2.2 | Data Display Code | manual | 76d | 2018-09-10 A | 2018-11-25 A |  | 100% |  |  | Diego; Jorge | 1216h | 1216h |
| 139 | 1.5.2.3 | Main Menu Code | manual | 76d | 2018-09-10 A | 2018-11-25 A |  | 100% |  |  | Diego; Jorge | 1216h | 1216h |
| 140 | 1.5.2.4 | Authentification Code | manual | 76d | 2018-09-10 A | 2018-11-25 A |  | 100% |  |  | Diego; Jorge | 1216h | 1216h |
| 141 | 1.5.2.5 | Biosignal Display Code | manual | 76d | 2018-09-10 A | 2018-11-25 |  | 75% | 19d |  | Diego; Jorge | 1216h | 912h |
| 142 | 1.5.2.6 | MCU Display Code | manual | 76d | 2018-09-10 | 2018-11-25 |  |  |  |  | Diego; Jorge | 1216h |  |
| 143 | 1.5.2.7 | Patient/User Info Display Code | manual | 76d | 2018-09-10 | 2018-11-25 |  |  |  |  | Diego; Jorge | 1216h |  |
| 144 | 1.5.2.8 | Storage/Cloud Access Display Code | manual | 76.75d | 2018-09-10 A | 2018-11-25 |  | 50% | 38.38d |  | Diego; Jorge | 1228h | 614h |
| 145 | 1.5.3 | **Hardware Configuration** |  | 63d | 2018-09-24 A | 2018-11-25 | 113, 32, 64 | 14% | 54.23d | 0d | Diego; Jorge | 4572h | 636.28h |
| 146 | 1.5.3.1 | Test Bluetooth connection (Send) | manual | 62d | 2018-09-24 | 2018-11-25 | 113FF |  |  |  | Diego; Jorge | 992h |  |
| 147 | 1.5.3.2 | Test Bluetooth connection (Receive) | manual | 62d | 2018-09-24 A | 2018-11-25 | 113FF | 50% | 31d |  | Diego; Jorge | 992h | 496h |
| 148 | 1.5.3.3 | Test config with protoboard and known signals | manual | 49d | 2018-10-07 | 2018-11-25 | 113FF |  |  |  | Diego; Jorge | 784h |  |
| 149 | 1.5.3.4 | Test config with protoboard and biosignals | manual | 49.75d | 2018-10-07 | 2018-11-25 | 32FF, 64FF |  |  |  | Diego; Jorge | 796h |  |
| 150 | 1.5.4 | **Signal Processing** |  | 50d | 2018-10-07 | 2018-11-25 | 145, 136 |  |  | 0d | Diego; Jorge | 3164h |  |
| 151 | 1.5.4.1 | Amplifications | manual | 49d | 2018-10-07 | 2018-11-25 | 145FF, 136FF |  |  |  | Diego; Jorge | 784h |  |
| 152 | 1.5.4.2 | Filters | manual | 49d | 2018-10-07 | 2018-11-25 | 145FF, 136FF |  |  |  | Diego; Jorge | 784h |  |
| 153 | 1.5.4.3 | Signal Conditioning (Rect, Prom, Offset, etc) | manual | 49.75d | 2018-10-07 | 2018-11-25 | 145FF, 136FF |  |  |  | Diego; Jorge | 796h |  |
| 154 | 1.5.5 | **Outsource App and Web design** |  | 97d | 2018-10-07 | 2019-01-11 | 128, 136, 145, 150 |  |  | 0d | Diego; Jorge | 3776h |  |
| 155 | 1.5.5.1 | Optimize application design | manual | 64d | 2018-10-07 | 2018-12-09 | 128FF |  |  |  | Diego; Jorge | 1024h |  |
| 156 | 1.5.5.2 | Contact 5 suppliers to design the application | manual | 15d | 2018-11-01 | 2018-11-16 | 128SF, 136SF, 145SF, 150SF |  |  |  | Diego; Jorge | 240h |  |
| 157 | 1.5.5.3 | Receive 3 RFQs | manual | 18d | 2018-11-05 | 2018-11-23 | 156 |  |  |  | Diego; Jorge | 288h |  |
| 158 | 1.5.5.4 | Perform PO | manual | 4d | 2018-11-26 | 2018-11-30 | 157 |  |  |  | Diego; Jorge | 64h |  |
| 159 | 1.5.5.5 | Receive application | manual | 33d | 2018-12-03 | 2019-01-04 |  |  |  |  | Diego; Jorge | 528h |  |
| 160 | 1.5.5.6 | Validate application | manual | 5d | 2019-01-07 | 2019-01-11 |  |  |  |  | Diego; Jorge | 80h |  |

Notes:
- 137: Java + Android Studio
- 140: 23.09.: Se probó con un registro y funcionó. / Falta hacerlo con más registro, más general.
- 144: 23.09.: Almacenamiento local se guarda en el celular. / Clarificar con la cloud database / 14.10.: https://firebase.google.com/docs/database

| ID | WBS | Task | Type | Duration | Start | Finish | Predecessors | Complete | Remaining | Total slack | Resources | Work | Actual work |
| --- | --- | --- | --- | --- | --- | --- | --- | --- | --- | --- | --- | --- | --- |
| 161 | 2 | **Administrative** |  | 136d | 2018-09-17 A | 2019-01-30 |  | 2% | 132.92d | 0d | Eduardo; Jorge | 19548h | 373.87h |
| 162 | 2.1 | **Business Plan: Kinesic** |  | 64d | 2018-10-07 | 2018-12-09 |  |  |  | 0d | Eduardo | 1842h |  |
| 163 | 2.1.1 | **Company Profile** |  | 6d | 2018-12-04 | 2018-12-09 |  |  |  | 0d | Eduardo | 110h |  |
| 164 | 2.1.1.1 | Create company's description | manual | 3d | 2018-12-04 | 2018-12-06 |  |  |  |  | Eduardo | 24h |  |
| 165 | 2.1.1.2 | Generate profile of company's members | manual | 3d | 2018-12-06 | 2018-12-08 |  |  |  |  | Eduardo | 24h |  |
| 166 | 2.1.1.3 | Describe products and services | manual | 2d | 2018-12-08 | 2018-12-09 |  |  |  |  | Eduardo | 16h |  |
| 167 | 2.1.2 | **Market Research** |  | 15d | 2018-10-07 | 2018-10-21 |  |  |  | 0d | Eduardo | 248h |  |
| 168 | 2.1.2.1 | Evaluate market size and expected growth for electronic medical devices | manual | 3d | 2018-10-07 | 2018-10-09 |  |  |  |  | Eduardo | 24h |  |
| 169 | 2.1.2.2 | Evaluate market size and expected growth for eHealth | manual | 3d | 2018-10-10 | 2018-10-12 |  |  |  |  | Eduardo | 24h |  |
| 170 | 2.1.2.3 | Evaluate market size and expected growth for development microcontroller platforms | manual | 4d | 2018-10-13 | 2018-10-16 |  |  |  |  | Eduardo | 32h |  |
| 171 | 2.1.2.4 | Analyze main competitors | manual | 6d | 2018-10-16 | 2018-10-21 |  |  |  |  | Eduardo | 48h |  |
| 172 | 2.1.3 | **Strategy and Implementation** |  | 47d | 2018-10-22 | 2018-12-07 |  |  |  | 0d | Eduardo | 792h |  |
| 173 | 2.1.3.1 | Describe pricing, promotion, distribution and logistics | manual | 10d | 2018-10-22 | 2018-10-31 |  |  |  |  | Eduardo | 80h |  |
| 174 | 2.1.3.2 | Define marketing plan to promote the business and enter the market | manual | 11d | 2018-10-31 | 2018-11-10 |  |  |  |  | Eduardo | 88h |  |
| 175 | 2.1.3.3 | Make feasibility analysis for crowdfunding campaign | manual | 16d | 2018-11-07 | 2018-11-22 |  |  |  |  | Eduardo | 128h |  |
| 176 | 2.1.3.4 | Evaluate impact of Hackathon with prototype | manual | 15d | 2018-11-23 | 2018-12-07 |  |  |  |  | Eduardo | 120h |  |
| 177 | 2.1.4 | **Financial Analysis** |  | 11d | 2018-11-23 | 2018-12-03 |  |  |  | 0d | Eduardo | 182h |  |
| 178 | 2.1.4.1 | Create historical financial data: income statements, balance sheets and cash flow statements | manual | 6d | 2018-11-23 | 2018-11-28 |  |  |  |  | Eduardo | 48h |  |
| 179 | 2.1.4.2 | Estimate financial situation for the company's first 5 years | manual | 6d | 2018-11-28 | 2018-12-03 |  |  |  |  | Eduardo | 48h |  |
| 180 | 2.2 | **Business Plan: mHeart** |  | 63.5d | 2018-10-07 A | 2018-12-09 |  | 21% | 50.11d | 0d | Eduardo | 1514h | 324.73h |
| 181 | 2.2.1 | **Company Profile** |  | 6d | 2018-12-04 | 2018-12-09 |  |  |  | 0d | Eduardo | 88h |  |
| 182 | 2.2.1.1 | Create company's description | manual | 2d | 2018-12-04 | 2018-12-06 | 194 |  |  |  | Eduardo | 16h |  |
| 183 | 2.2.1.2 | Generate profile of company's members | manual | 2d | 2018-12-06 | 2018-12-08 | 182 |  |  |  | Eduardo | 16h |  |
| 184 | 2.2.1.3 | Describe products and services | manual | 1.25d | 2018-12-08 | 2018-12-09 | 183 |  |  |  | Eduardo | 10h |  |

| ID | WBS | Task | Type | Duration | Start | Finish | Predecessors | Complete | Total slack | Resources | Work | Actual work |
| --- | --- | --- | --- | --- | --- | --- | --- | --- | --- | --- | --- | --- |
| 185 | 2.2.2 | **Market Research** |  | 14d | 2018-10-07 A | 2018-10-21 A |  | 100% |  | Eduardo | 218h | 218h |
| 186 | 2.2.2.1 | Evaluate market size and expected growth for electronic medical devices | manual | 2.5d | 2018-10-07 A | 2018-10-09 A |  | 100% |  | Eduardo | 20h | 20h |
| 187 | 2.2.2.2 | Evaluate market size and expected growth for eHealth | manual | 3d | 2018-10-10 A | 2018-10-12 A | 186 | 100% |  | Eduardo | 24h | 24h |
| 188 | 2.2.2.3 | Evaluate market size and expected growth for hearth diseases | manual | 3d | 2018-10-13 A | 2018-10-16 A | 187 | 100% |  | Eduardo | 24h | 24h |
| 189 | 2.2.2.4 | Analyze main competitors | manual | 5d | 2018-10-16 A | 2018-10-21 A | 188 | 100% |  | Eduardo | 40h | 40h |
| 190 | 2.2.3 | **Strategy and Implementation** |  | 32d | 2018-10-22 | 2018-11-22 |  |  | 0d | Eduardo | 532h |  |
| 191 | 2.2.3.1 | Describe pricing, promotion, distribution and logistics | manual | 9d | 2018-10-22 | 2018-10-31 | 185 |  |  | Eduardo | 72h |  |
| 192 | 2.2.3.2 | Define marketing plan to promote the business and enter the market | manual | 10d | 2018-10-31 | 2018-11-10 | 191 |  |  | Eduardo | 80h |  |
| 193 | 2.2.3.3 | Make feasibility analysis for crowdfunding campaign | manual | 15.75d | 2018-11-07 | 2018-11-22 | 192SS |  |  | Eduardo | 126h |  |
| 194 | 2.2.4 | **Financial Analysis** |  | 11d | 2018-11-23 | 2018-12-03 |  |  | 0d | Eduardo | 170h |  |
| 195 | 2.2.4.1 | Create historical financial data: income statements, balance sheets and cash flow statements | manual | 5d | 2018-11-23 | 2018-11-28 | 190 |  |  | Eduardo | 40h |  |
| 196 | 2.2.4.2 | Estimate financial situation for the company's first 5 years | manual | 5.5d | 2018-11-28 | 2018-12-03 | 195 |  |  | Eduardo | 44h |  |
| 197 | 2.3 | **Company** |  | 136d | 2018-09-17 | 2019-01-30 |  |  | 0d | Jorge; Eduardo | 10900h |  |
| 198 | 2.3.1 | **Foundation** |  | 122d | 2018-10-01 | 2019-01-30 |  |  | 0d | Eduardo; Jorge | 3072h |  |
| 199 | 2.3.1.1 | Investigate requirements for UG and GmbH foundation | manual | 30d | 2018-10-01 | 2018-10-30 |  |  |  | Eduardo | 240h |  |
| 200 | 2.3.1.2 | Investigate requirements for S.A. de C.V. foundation | manual | 14d | 2018-12-10 | 2018-12-23 |  |  |  | Eduardo; Jorge | 224h |  |
| 201 | 2.3.1.3 | Investigate collaboration or synergy between S.A. de C.V. and UG/GmbH | manual | 14d | 2018-12-24 | 2019-01-06 | 199, 200 |  |  | Eduardo; Jorge | 224h |  |
| 202 | 2.3.1.4 | Found UG or GmbH | manual | 30d | 2018-10-31 | 2018-11-29 | 199 |  |  | Eduardo | 240h |  |
| 203 | 2.3.1.5 | Found S.A. de C.V. (if needed) | manual | 24d | 2019-01-07 | 2019-01-30 | 201 |  |  | Jorge | 192h |  |
| 204 | 2.3.2 | **Tax Consulting** |  | 93d | 2018-10-25 | 2019-01-25 |  |  | 0d | Eduardo; Jorge | 1854h |  |
| 205 | 2.3.2.1 | Receive 3 RFQs from tax consultants in Germany | manual | 22d | 2018-10-25 | 2018-11-15 |  |  |  | Eduardo | 176h |  |
| 206 | 2.3.2.2 | Hire tax consultant in Germany | manual | 5d | 2018-11-19 | 2018-11-23 | 205 |  |  | Eduardo | 40h |  |
| 207 | 2.3.2.3 | Receive 3 RFQs from tax consultants in Mexico (if needed) | manual | 15d | 2019-01-07 | 2019-01-21 | 203SS |  |  | Jorge | 120h |  |
| 208 | 2.3.2.4 | Hire tax consultant in Mexico (if needed) | manual | 3.75d | 2019-01-22 | 2019-01-25 | 207 |  |  | Jorge | 30h |  |

| ID | WBS | Task | Type | Duration | Start | Finish | Predecessors | Total slack | Resources | Work |
| --- | --- | --- | --- | --- | --- | --- | --- | --- | --- | --- |
| 209 | 2.3.3 | **Accounting Tool** |  | 19d | 2018-11-05 | 2018-11-23 |  | 0d | Eduardo | 300h |
| 210 | 2.3.3.1 | Investigate accounting tools | manual | 14d | 2018-11-05 | 2018-11-18 |  |  | Eduardo | 112h |
| 211 | 2.3.3.2 | Define accounting tool to be used | manual | 4.75d | 2018-11-19 | 2018-11-23 | 210 |  | Eduardo | 38h |
| 212 | 2.3.4 | **HR Tool** |  | 5d | 2018-11-26 | 2018-11-30 |  | 0d | Eduardo | 80h |
| 213 | 2.3.4.1 | Define tool to be used for company's email (e.g., tool to connect external email to email account) | manual | 5d | 2018-11-26 | 2018-11-30 |  |  | Eduardo | 40h |
| 214 | 2.3.5 | **Website: Biosignal platform** |  | 66.5d | 2018-09-17 | 2018-11-22 |  | 0d | Jorge; Eduardo | 1504h |
| 215 | 2.3.5.1 | Receive 3 RFQs to outsource website | manual | 28d | 2018-09-17 | 2018-10-14 |  |  | Jorge | 224h |
| 216 | 2.3.5.2 | Outsource website design (Front End) | manual | 22d | 2018-10-26 | 2018-11-17 | 215, 220 |  | Jorge | 176h |
| 217 | 2.3.5.3 | Generate initial emails with company's website | manual | 5d | 2018-11-17 | 2018-11-22 | 216, 221 |  | Jorge | 40h |
| 218 | 2.3.6 | **Website: Heart monitor** |  | 76d | 2018-09-17 | 2018-12-01 |  | 0d | Jorge; Eduardo | 1918h |
| 219 | 2.3.6.1 | Receive 3 RFQs to outsource website | manual | 27d | 2018-09-17 | 2018-10-14 |  |  | Jorge | 216h |
| 220 | 2.3.6.2 | Outsource website design (Front End) | manual | 15d | 2018-10-11 | 2018-10-26 |  |  | Jorge | 120h |
| 221 | 2.3.6.3 | Generate initial emails with company's website | manual | 5d | 2018-10-26 | 2018-10-31 | 220 |  | Jorge | 40h |
| 222 | 2.3.6.4 | Buy keywords | manual | 5d | 2018-10-26 | 2018-10-31 | 220 |  | Eduardo | 40h |
| 223 | 2.3.6.5 | Idea validation | manual | 30d | 2018-10-26 | 2018-11-25 | 220 |  | Eduardo | 240h |
| 224 | 2.3.6.6 | Results analysis | manual | 6.25d | 2018-11-25 | 2018-12-01 | 223 |  | Eduardo | 50h |
| 225 | 2.4 | **Funding** |  | 74d | 2018-10-31 | 2019-01-12 | 199, 200 | 0d | Jorge; Eduardo | 1664h |
| 226 | 2.4.1 | Horizon 2020 | manual | 10d | 2018-10-31 | 2018-11-09 | 199 |  | Eduardo | 80h |
| 227 | 2.4.2 | Funding Programs: EU | manual | 10d | 2018-11-10 | 2018-11-19 | 226 |  | Eduardo | 80h |
| 228 | 2.4.3 | Funding Programs: Germany | manual | 10d | 2018-11-20 | 2018-11-29 | 227 |  | Eduardo | 80h |
| 229 | 2.4.4 | Funding Programs: Mexico | manual | 10d | 2018-12-24 | 2019-01-02 | 200 |  | Jorge | 80h |
| 230 | 2.4.5 | Funding Programs: Jalisco | manual | 10d | 2019-01-03 | 2019-01-12 | 229 |  | Jorge | 80h |
| 231 | 2.4.6 | Crowdfunding | manual | 10d | 2018-10-31 | 2018-11-09 | 199 |  | Eduardo | 80h |
| 232 | 2.5 | **IP** |  | 61d | 2018-11-01 | 2018-12-31 |  | 0d | Eduardo; Jorge | 1456h |
| 233 | 2.5.1 | General Information | manual | 15d | 2018-11-01 | 2018-11-16 |  |  | Eduardo | 120h |
| 234 | 2.5.2 | European Patent | manual | 15d | 2018-11-16 | 2018-12-01 | 233 |  | Eduardo | 120h |
| 235 | 2.5.3 | US Patent | manual | 15d | 2018-12-01 | 2018-12-16 | 234 |  | Jorge | 120h |
| 236 | 2.5.4 | International Patent | manual | 15d | 2018-12-16 | 2018-12-31 | 235 |  | Eduardo | 120h |
